# Date_Helper

How a schedule from ProjectLibre changed from version to version. A marks actual dates.

## Version 1 (saved 2026-02-19)

Note of the change: Merge branch 'main' of https://github.com/timourka/diplom

| ID | WBS | Task | Duration | Start | Finish | Predecessors | Constraint |
| --- | --- | --- | --- | --- | --- | --- | --- |
| 1 | 1 | **Аналитика** | 2.29d | 2026-03-24 11:00 | 2026-03-26 14:20 |  | as late as possible |
| 2 |  | Формирование первичной темы ВКР | 0.21d | 2026-03-24 11:00 | 2026-03-24 13:40 |  | as late as possible |
| 3 |  | Проверка реализуемости темы (поиск решений и ограничений по открытым источникам) | 0.62d | 2026-03-24 13:40 | 2026-03-25 09:40 | 2 | start no earlier than 2026-03-20 11:00 |
| 4 |  | Уточнение и корректировка темы совместно с научным руководителем | 0.21d | 2026-03-25 09:40 | 2026-03-25 11:20 | 3 | as late as possible |
| 5 |  | Повторная проверка реализуемости уточнённой темы (сравнение подходов/рисков) | 0.62d | 2026-03-25 11:20 | 2026-03-26 08:20 | 4 | as late as possible |
| 6 |  | Формирование и фиксация основной концепции решения | 0.21d | 2026-03-26 08:20 | 2026-03-26 10:00 | 5 | as late as possible |
| 7 |  | Анализ аналогов (функции, ограничения, применимость к задаче) | 0.21d | 2026-03-26 10:00 | 2026-03-26 11:40 | 6 | as late as possible |
| 8 |  | Анализ методов решения (OCR, CV-подходы, детекция) | 0.21d | 2026-03-26 11:40 | 2026-03-26 14:20 | 7 | as late as possible |
| 9 | 2 | **Данные** | 0.04d | 2026-03-26 14:20 | 2026-03-26 14:40 | 1 | as late as possible |
| 10 |  | Подготовка первичного набора данных для тестирования | 0.04d | 2026-03-26 14:20 | 2026-03-26 14:40 |  | as late as possible |
| 11 | 3 | **R&D** | 1.25d | 2026-03-26 14:40 | 2026-03-27 16:40 | 9 | as late as possible |
| 12 |  | Реализация прототипа метода №1 (OCR) | 0.25d | 2026-03-26 14:40 | 2026-03-26 16:40 |  | as late as possible |
| 13 |  | Запуск и первичная интеграция метода №1 | 0.12d | 2026-03-26 16:40 | 2026-03-27 08:40 | 12 | as late as possible |
| 14 |  | Тестирование и оценка метода №1 на тестовых данных | 0.12d | 2026-03-27 08:40 | 2026-03-27 09:40 | 13 | as late as possible |
| 15 |  | Реализация прототипа метода №2 (аналитический поиск области даты) | 0.12d | 2026-03-27 09:40 | 2026-03-27 10:40 | 14 | as late as possible |
| 16 |  | Запуск и первичная интеграция метода №2 | 0.12d | 2026-03-27 10:40 | 2026-03-27 11:40 | 15 | as late as possible |
| 17 |  | Тестирование и сравнительная оценка метода №2 | 0.29d | 2026-03-27 11:40 | 2026-03-27 15:00 | 16 | as late as possible |
| 18 |  | Проработка и выбор метода №3 (детекция YOLO) | 0.21d | 2026-03-27 15:00 | 2026-03-27 16:40 | 17 | as late as possible |
| 19 | 4 | **ML** | 0.04d | 2026-03-27 16:40 | 2026-03-27 17:00 | 11 | as late as possible |
| 20 |  | Реализация базовой интеграции YOLO (подготовка окружения/запуск) | 0.04d | 2026-03-27 16:40 | 2026-03-27 17:00 |  | as late as possible |

## Version 2 (saved 2026-03-02)

Note of the change: Merge branch 'main' of https://github.com/timourka/diplom

Last finish 2026-03-27 → 2026-03-25 (-2d).

Added:

| ID | Task | Duration | Start | Finish | Predecessors | Constraint |
| --- | --- | --- | --- | --- | --- | --- |
| 21 | Тестирование и первичная оценка качества метода №3 | 0.08d | 2026-03-13 15:00 | 2026-03-13 15:40 | 20 | as late as possible |
| 22 | **Проектирование** | 0.08d | 2026-03-13 15:40 | 2026-03-13 16:20 | 19 | as late as possible |
| 23 | Проработка сценария внедрения решения в систему (с научным руководителем) | 0.08d | 2026-03-13 15:40 | 2026-03-13 16:20 |  | as late as possible |
| 24 | **Документы** | 0.33d | 2026-03-13 16:20 | 2026-03-16 10:00 | 22 | as late as possible |
| 25 | Подготовка технического задания (ТЗ) | 0.33d | 2026-03-13 16:20 | 2026-03-16 10:00 |  | as late as possible |
| 26 | **Моб. приложение** | 3.83d | 2026-03-16 10:00 | 2026-03-20 08:40 | 24 | as late as possible |
| 27 | Реализовать экран сканирования: получение видеопотока, цикл обработки кадров (F1) | 0.5d | 2026-03-16 10:00 | 2026-03-16 15:00 |  | as late as possible |
| 28 | Реализовать отображение bbox/подсветки даты на экране (F2) | 0.25d | 2026-03-16 15:00 | 2026-03-16 17:00 | 27 | as late as possible |
| 29 | Реализовать сценарий «получить дату изготовления»: выбор способа (скан/вручную), валидация формата (F3) | 0.33d | 2026-03-17 08:00 | 2026-03-17 10:40 | 28 | as late as possible |
| 30 | Реализовать «положить продукт на хранение»: форма + сохранение (F4) | 0.42d | 2026-03-17 10:40 | 2026-03-17 15:00 | 29 | as late as possible |
| 31 | Реализовать «просмотреть продукты на хранении»: список, сортировка/поиск (минимально) (F5) | 0.42d | 2026-03-17 15:00 | 2026-03-18 09:20 | 30 | as late as possible |
| 32 | Реализовать «удалить продукт с хранения» + подтверждение (F6) | 0.17d | 2026-03-18 09:20 | 2026-03-18 10:40 | 31 | as late as possible |
| 33 | Реализовать регистрацию пользователя (UI + обработка ошибок) (F7) | 0.33d | 2026-03-18 10:40 | 2026-03-18 14:20 | 32 | as late as possible |
| 34 | Реализовать авторизацию пользователя и хранение токена/сессии (F8) | 0.33d | 2026-03-18 14:20 | 2026-03-18 17:00 | 33 | as late as possible |
| 35 | Реализовать отправку сообщения об ошибке: выбор/загрузка видео + комментарий (F9) | 0.42d | 2026-03-19 08:00 | 2026-03-19 11:20 | 34 | as late as possible |
| 36 | Встроенная разметка в рамках жалобы: инструмент выделения области и формирование YOLO-разметки (как часть F9/F15) | 0.67d | 2026-03-19 11:20 | 2026-03-20 08:40 | 35 | as late as possible |
| 37 | **Офлайн ML** | 1.33d | 2026-03-24 11:20 | 2026-03-25 15:00 | 26 | as late as possible |
| 38 | Интеграция офлайн-модели на устройстве (TFLite/NCNN), вызов инференса (F1, «офлайн») | 0.83d | 2026-03-24 11:20 | 2026-03-25 10:00 |  | as late as possible |
| 39 | Оптимизация скорости/памяти: пороги, уменьшение размера входа, замер FPS/latency (F1, требования по производительности) | 0.5d | 2026-03-25 10:00 | 2026-03-25 15:00 | 38 | as late as possible |
| 40 | **Бэкенд** | 3d | 2026-03-16 16:20 | 2026-03-19 16:20 | 26SS | as late as possible |
| 41 | Реализовать API авторизации/регистрации (эндпоинты + валидация) (F7, F8) | 0.58d | 2026-03-16 16:20 | 2026-03-17 12:00 |  | as late as possible |
| 42 | Реализовать API «хранилище»: add/list/delete + права доступа (F4–F6) | 0.67d | 2026-03-17 12:00 | 2026-03-18 09:20 | 41 | as late as possible |
| 43 | Реализовать API «детекция» (при необходимости серверного режима) (F1–F2) | 0.5d | 2026-03-18 09:20 | 2026-03-18 14:20 | 42 | as late as possible |
| 44 | Реализовать API «сообщения об ошибке»: приём видео+разметки+комментария, сохранение (F9) | 0.67d | 2026-03-18 14:20 | 2026-03-19 10:40 | 43 | as late as possible |
| 45 | Реализовать схему БД по ER: миграции, внешние ключи, индексы, ограничения (для F4–F14) | 0.58d | 2026-03-19 10:40 | 2026-03-19 16:20 | 44 | as late as possible |
| 46 | **Админка** | 2.67d | 2026-03-17 10:00 | 2026-03-19 16:20 | 26SS | as late as possible |
| 47 | Реализовать авторизацию администратора (F8 для админа) | 0.25d | 2026-03-17 10:00 | 2026-03-17 12:00 |  | as late as possible |
| 48 | Реализовать «просмотреть сообщения об ошибках» (F10) | 0.33d | 2026-03-17 12:00 | 2026-03-17 15:40 | 47 | as late as possible |
| 49 | Реализовать «удалить сообщения об ошибках» и отметку «обработано» (F11) | 0.25d | 2026-03-17 15:40 | 2026-03-18 08:40 | 48 | as late as possible |
| 50 | Реализовать «список пользователей» и «блокировка пользователя» (F12–F13) | 0.42d | 2026-03-18 08:40 | 2026-03-18 12:00 | 49 | as late as possible |
| 51 | Реализовать «статистика качества»: отчёты по версиям модели, динамика по времени (F14) | 0.67d | 2026-03-18 12:00 | 2026-03-19 09:20 | 50 | as late as possible |
| 52 | Доработка разметки видео (AnnotationTool): экспорт YOLO, проверка целостности, пакетная разметка (F15) | 0.75d | 2026-03-19 09:20 | 2026-03-19 16:20 | 51 | as late as possible |
| 53 | **ML** | 1.83d | 2026-03-19 16:20 | 2026-03-23 15:00 | 40, 46 | as late as possible |
| 54 | Подготовить конфиги обучения, пайплайн датасета, аугментации (F16) | 0.5d | 2026-03-19 16:20 | 2026-03-20 11:20 |  | as late as possible |
| 55 | Обучение/дообучение модели на накопленных примерах + сохранение версии/метрик (F16) | 0.83d | 2026-03-20 11:20 | 2026-03-23 10:00 | 54 | as late as possible |
| 56 | Оценка качества: тестовый прогон, расчёт метрик, сравнение версий (F14, F16) | 0.5d | 2026-03-23 10:00 | 2026-03-23 15:00 | 55 | as late as possible |
| 57 | **Интеграция** | 0.92d | 2026-03-23 15:00 | 2026-03-24 14:20 | 53 | as late as possible |
| 58 | Процедура обновления модели: деплой весов на сервер и обновление мобильной модели (F16, эксплуатация) | 0.5d | 2026-03-23 15:00 | 2026-03-24 10:00 |  | as late as possible |
| 59 | Тестирование отказов: нет сети, нет камеры, ошибки загрузки видео, лимиты размера (F1–F11) | 0.42d | 2026-03-24 10:00 | 2026-03-24 14:20 | 58 | as late as possible |
| 60 | **Документация** | 1.08d | 2026-03-24 14:20 | 2026-03-25 15:00 | 57 | as late as possible |
| 61 | Подготовка раздела «эксперименты и результаты»: описание датасета, сравнение методов, выводы (F14–F16) | 0.58d | 2026-03-24 14:20 | 2026-03-25 10:00 |  | as late as possible |
| 62 | Обновление диаграмм/описаний под финальную реализацию и подготовка презентации/демо (все ФТ) | 0.5d | 2026-03-25 10:00 | 2026-03-25 15:00 | 61 | as late as possible |

Changed:

| ID | Task | Start | Finish | Duration | Predecessors | Other |
| --- | --- | --- | --- | --- | --- | --- |
| 1 | **Аналитика** | 2026-03-24 11:00 → 2025-09-24 14:40 (-181d) | 2026-03-26 14:20 → 2025-09-29 08:00 (-178d) |  |  |  |
| 2 | Формирование первичной темы ВКР | 2026-03-24 11:00 → 2025-09-24 14:40 (-181d) | 2026-03-24 13:40 → 2025-09-24 16:20 (-181d) |  |  |  |
| 3 | Проверка реализуемости темы (поиск решений и ограничений по открытым источникам) | 2026-03-24 13:40 → 2025-09-24 16:20 (-181d) | 2026-03-25 09:40 → 2025-09-25 13:20 (-181d) |  |  | constraint start no earlier than 2026-03-20 11:00 → as late as possible |
| 4 | Уточнение и корректировка темы совместно с научным руководителем | 2026-03-25 09:40 → 2025-09-25 13:20 (-181d) | 2026-03-25 11:20 → 2025-09-25 15:00 (-181d) |  |  |  |
| 5 | Повторная проверка реализуемости уточнённой темы (сравнение подходов/рисков) | 2026-03-25 11:20 → 2025-09-25 15:00 (-181d) | 2026-03-26 08:20 → 2025-09-26 11:00 (-181d) |  |  |  |
| 6 | Формирование и фиксация основной концепции решения | 2026-03-26 08:20 → 2025-09-26 11:00 (-181d) | 2026-03-26 10:00 → 2025-09-26 13:40 (-181d) |  |  |  |
| 7 | Анализ аналогов (функции, ограничения, применимость к задаче) | 2026-03-26 10:00 → 2025-09-26 13:40 (-181d) | 2026-03-26 11:40 → 2025-09-26 15:20 (-181d) |  |  |  |
| 8 | Анализ методов решения (OCR, CV-подходы, детекция) | 2026-03-26 11:40 → 2025-09-26 15:20 (-181d) | 2026-03-26 14:20 → 2025-09-29 08:00 (-178d) |  |  | constraint as late as possible → finish no later than 2025-09-29 08:00 |
| 9 | **Данные** | 2026-03-26 14:20 → 2025-11-12 11:00 (-134d) | 2026-03-26 14:40 → 2025-11-12 11:20 (-134d) |  |  |  |
| 10 | Подготовка первичного набора данных для тестирования | 2026-03-26 14:20 → 2025-11-12 11:00 (-134d) | 2026-03-26 14:40 → 2025-11-12 11:20 (-134d) |  |  |  |
| 11 | **R&D** | 2026-03-26 14:40 → 2025-11-12 11:20 (-134d) | 2026-03-27 16:40 → 2025-11-12 16:40 (-135d) | 1.25d → 0.54d |  |  |
| 12 | Реализация прототипа метода №1 (OCR) | 2026-03-26 14:40 → 2025-11-12 11:20 (-134d) | 2026-03-26 16:40 → 2025-11-12 14:20 (-134d) |  |  |  |
| 13 | Запуск и первичная интеграция метода №1 | 2026-03-26 16:40 → 2025-11-12 14:40 (-134d) | 2026-03-27 08:40 → 2025-11-12 15:40 (-135d) |  |  |  |
| 14 | Тестирование и оценка метода №1 на тестовых данных | 2026-03-27 08:40 → 2025-11-12 15:40 (-135d) | 2026-03-27 09:40 → 2025-11-12 16:40 (-135d) |  |  |  |
| 15 | Реализация прототипа метода №2 (аналитический поиск области даты) | 2026-03-27 09:40 → 2025-11-12 11:20 (-135d) | 2026-03-27 10:40 → 2025-11-12 13:20 (-135d) |  | 14 → 12SS |  |
| 16 | Запуск и первичная интеграция метода №2 | 2026-03-27 10:40 → 2025-11-12 13:20 (-135d) | 2026-03-27 11:40 → 2025-11-12 14:20 (-135d) |  |  |  |
| 17 | Тестирование и сравнительная оценка метода №2 | 2026-03-27 11:40 → 2025-11-12 14:20 (-135d) | 2026-03-27 15:00 → 2025-11-12 16:40 (-135d) |  |  |  |
| 18 | Проработка и выбор метода №3 (детекция YOLO) | 2026-03-27 15:00 → 2025-11-12 15:00 (-135d) | 2026-03-27 16:40 → 2025-11-12 16:40 (-135d) |  | 17 → 15SS |  |
| 19 | **ML** | 2026-03-27 16:40 → 2025-11-12 16:40 (-135d) | 2026-03-27 17:00 → 2026-03-13 15:40 (-14d) | 0.04d → 86.88d? |  |  |
| 20 | Реализация базовой интеграции YOLO (подготовка окружения/запуск) | 2026-03-27 16:40 → 2025-11-12 16:40 (-135d) | 2026-03-27 17:00 → 2025-11-13 08:00 (-134d) | 0.04d → 0.04d? |  | constraint as late as possible → finish no later than 2025-11-13 08:00 |

## Version 3 (saved 2026-03-05)

Note of the change: 3-5 ПО УПРАВЛЕНИЮ ПРОЕКТОМ

Last finish 2026-03-25 → 2026-03-02 (-23d). Complete tasks 0 → 49.

Changed:

| ID | Task | Start | Finish | Duration | Complete | Predecessors | Other |
| --- | --- | --- | --- | --- | --- | --- | --- |
| 1 | **Аналитика** | 2025-09-24 14:40 → 2025-09-10 (-14d) | 2025-09-29 08:00 → 2025-09-29 | 2.29d → 12.5d | 0% → 100% |  | baseline start none → 2025-09-22; baseline finish none → 2025-09-29 |
| 2 | Формирование первичной темы ВКР | 2025-09-24 14:40 → 2025-09-10 (-14d) | 2025-09-24 16:20 → 2025-09-12 (-12d) | 0.21d → 2d | 0% → 100% |  | resources none → Разработчик Тимур [10.42%]; Компьютер; ChatGPT; baseline start none → 2025-09-22; baseline finish none → 2025-09-22 |
| 3 | Проверка реализуемости темы (поиск решений и ограничений по открытым источникам) | 2025-09-24 16:20 → 2025-09-12 (-12d) | 2025-09-25 13:20 → 2025-09-15 (-10d) | 0.62d → 1.25d | 0% → 100% |  | resources none → Разработчик Тимур [50%]; Компьютер; ChatGPT; baseline start none → 2025-09-22; baseline finish none → 2025-09-24 |
| 4 | Уточнение и корректировка темы совместно с научным руководителем | 2025-09-25 13:20 → 2025-09-15 (-10d) | 2025-09-25 15:00 → 2025-09-17 (-8d) | 0.21d → 2d | 0% → 100% |  | resources none → Разработчик Тимур [10.42%]; Компьютер; ChatGPT; baseline start none → 2025-09-24; baseline finish none → 2025-09-24 |
| 5 | Повторная проверка реализуемости уточнённой темы (сравнение подходов/рисков) | 2025-09-25 15:00 → 2025-09-17 (-8d) | 2025-09-26 11:00 → 2025-09-18 (-8d) | 0.62d → 1.25d | 0% → 100% |  | resources none → Разработчик Тимур [50%]; Компьютер; ChatGPT; baseline start none → 2025-09-24; baseline finish none → 2025-09-25 |
| 6 | Формирование и фиксация основной концепции решения | 2025-09-26 11:00 → 2025-09-19 (-7d) | 2025-09-26 13:40 → 2025-09-22 (-4d) | 0.21d → 2d | 0% → 100% |  | resources none → Разработчик Тимур [10.42%]; Компьютер; ChatGPT; baseline start none → 2025-09-25; baseline finish none → 2025-09-26 |
| 7 | Анализ аналогов (функции, ограничения, применимость к задаче) | 2025-09-26 13:40 → 2025-09-23 (-3d) | 2025-09-26 15:20 → 2025-09-24 (-2d) | 0.21d → 2d | 0% → 100% |  | resources none → Разработчик Тимур [10.42%]; Компьютер; ChatGPT; baseline start none → 2025-09-26; baseline finish none → 2025-09-26 |
| 8 | Анализ методов решения (OCR, CV-подходы, детекция) | 2025-09-26 15:20 → 2025-09-25 (-1d) | 2025-09-29 08:00 → 2025-09-29 | 0.21d → 2d | 0% → 100% |  | constraint finish no later than 2025-09-29 08:00 → finish no later than 2025-09-29; resources none → Разработчик Тимур [10.42%]; Компьютер; ChatGPT; baseline start none → 2025-09-26; baseline finish none → 2025-09-29 |
| 9 | **Данные** | 2025-11-12 11:00 → 2025-11-05 (-7d) | 2025-11-12 11:20 → 2025-11-05 (-7d) |  | 0% → 100% |  | baseline start none → 2025-11-07; baseline finish none → 2025-11-07 |
| 10 | Подготовка первичного набора данных для тестирования | 2025-11-12 11:00 → 2025-11-05 (-7d) | 2025-11-12 11:20 → 2025-11-05 (-7d) |  | 0% → 100% |  | resources none → Разработчик Тимур [50%]; Компьютер; ChatGPT; baseline start none → 2025-11-07; baseline finish none → 2025-11-07 |
| 11 | **R&D** | 2025-11-12 11:20 → 2025-11-05 (-7d) | 2025-11-12 16:40 → 2025-11-11 (-1d) | 0.54d → 4.64d | 0% → 100% |  | baseline start none → 2025-11-07; baseline finish none → 2025-11-12 |
| 12 | Реализация прототипа метода №1 (OCR) | 2025-11-12 11:20 → 2025-11-05 (-7d) | 2025-11-12 14:20 → 2025-11-06 (-6d) | 0.25d → 1.67d | 0% → 100% |  | resources none → Разработчик Тимур [15%]; Компьютер; ChatGPT; baseline start none → 2025-11-07; baseline finish none → 2025-11-10 |
| 13 | Запуск и первичная интеграция метода №1 | 2025-11-12 14:40 → 2025-11-10 (-2d) | 2025-11-12 15:40 → 2025-11-10 (-2d) | 0.12d → 0.83d | 0% → 100% |  | resources none → Разработчик Тимур [15%]; Компьютер; ChatGPT; baseline start none → 2025-11-11; baseline finish none → 2025-11-12 |
| 14 | Тестирование и оценка метода №1 на тестовых данных | 2025-11-12 15:40 → 2025-11-11 (-1d) | 2025-11-12 16:40 → 2025-11-11 (-1d) | 0.12d → 0.83d | 0% → 100% |  | resources none → Разработчик Тимур; Компьютер; ChatGPT; baseline start none → 2025-11-12; baseline finish none → 2025-11-12 |
| 15 | Реализация прототипа метода №2 (аналитический поиск области даты) | 2025-11-12 11:20 → 2025-11-06 (-6d) | 2025-11-12 13:20 → 2025-11-07 (-5d) | 0.12d → 0.83d | 0% → 100% |  | resources none → Разработчик Тимур [15%]; Компьютер; ChatGPT; baseline start none → 2025-11-07; baseline finish none → 2025-11-10 |
| 16 | Запуск и первичная интеграция метода №2 | 2025-11-12 13:20 → 2025-11-07 (-5d) | 2025-11-12 14:20 → 2025-11-07 (-5d) | 0.12d → 0.2d | 0% → 100% |  | resources none → Разработчик Тимур [15%]; Компьютер; ChatGPT; baseline start none → 2025-11-10; baseline finish none → 2025-11-10 |
| 17 | Тестирование и сравнительная оценка метода №2 | 2025-11-12 14:20 → 2025-11-07 (-5d) | 2025-11-12 16:40 → 2025-11-11 (-1d) | 0.29d → 1.94d | 0% → 100% |  | resources none → Разработчик Тимур [15%]; Компьютер; ChatGPT; baseline start none → 2025-11-10; baseline finish none → 2025-11-12 |
| 18 | Проработка и выбор метода №3 (детекция YOLO) | 2025-11-12 15:00 → 2025-11-10 (-2d) | 2025-11-12 16:40 → 2025-11-11 (-1d) | 0.21d → 1.39d | 0% → 100% |  | resources none → Разработчик Тимур [15%]; Компьютер; ChatGPT; baseline start none → 2025-11-11; baseline finish none → 2025-11-12 |
| 19 | **ML** | 2025-11-12 16:40 → 2025-11-11 (-1d) | 2026-03-13 15:40 → 2025-11-12 (-121d) | 86.88d? → 1.17d | 0% → 100% |  | constraint as late as possible → finish no later than 2025-11-13; baseline start none → 2025-11-12; baseline finish none → 2026-01-12 |
| 20 | Реализация базовой интеграции YOLO (подготовка окружения/запуск) | 2025-11-12 16:40 → 2025-11-11 (-1d) | 2025-11-13 08:00 → 2025-11-12 (-1d) | 0.04d? → 1d | 0% → 100% |  | constraint finish no later than 2025-11-13 08:00 → as late as possible; resources none → Разработчик Тимур [50%]; Компьютер; ChatGPT; baseline start none → 2025-11-12; baseline finish none → 2025-11-13 |
| 21 | Тестирование и первичная оценка качества метода №3 | 2026-03-13 15:00 → 2025-11-12 (-121d) | 2026-03-13 15:40 → 2025-11-12 (-121d) | 0.08d → 0.17d | 0% → 100% |  | resources none → Разработчик Тимур [50%]; Компьютер; ChatGPT; baseline start none → 2026-01-12; baseline finish none → 2026-01-12 |
| 22 | **Проектирование** | 2026-03-13 15:40 → 2026-01-09 (-63d) | 2026-03-13 16:20 → 2026-01-09 (-63d) | 0.08d → 0.17d | 0% → 100% |  | baseline start none → 2026-01-12; baseline finish none → 2026-01-12 |
| 23 | Проработка сценария внедрения решения в систему (с научным руководителем) | 2026-03-13 15:40 → 2026-01-09 (-63d) | 2026-03-13 16:20 → 2026-01-09 (-63d) | 0.08d → 0.17d | 0% → 100% |  | resources none → Разработчик Тимур [50%]; Компьютер; ChatGPT; baseline start none → 2026-01-12; baseline finish none → 2026-01-12 |
| 24 | **Документы** | 2026-03-13 16:20 → 2026-01-09 (-63d) | 2026-03-16 10:00 → 2026-01-13 (-62d) | 0.33d → 2d | 0% → 100% |  | baseline start none → 2026-01-13; baseline finish none → 2026-01-13 |
| 25 | Подготовка технического задания (ТЗ) | 2026-03-13 16:20 → 2026-01-09 (-63d) | 2026-03-16 10:00 → 2026-01-13 (-62d) | 0.33d → 2d | 0% → 100% |  | resources none → Разработчик Тимур [50%]; Компьютер; ChatGPT; baseline start none → 2026-01-13; baseline finish none → 2026-01-13 |
| 26 | **Моб. приложение** | 2026-03-16 10:00 → 2026-01-13 (-62d) | 2026-03-20 08:40 → 2026-02-03 (-45d) | 3.83d → 15.33d | 0% → 100% |  | baseline start none → 2026-01-13; baseline finish none → 2026-02-03 |
| 27 | Реализовать экран сканирования: получение видеопотока, цикл обработки кадров (F1) | 2026-03-16 10:00 → 2026-01-13 (-62d) | 2026-03-16 15:00 → 2026-01-15 (-60d) | 0.5d → 2d | 0% → 100% |  | resources none → Разработчик Тимур [25%]; Компьютер; ChatGPT; baseline start none → 2026-01-13; baseline finish none → 2026-01-15 |
| 28 | Реализовать отображение bbox/подсветки даты на экране (F2) | 2026-03-16 15:00 → 2026-01-15 (-60d) | 2026-03-16 17:00 → 2026-01-16 (-59d) | 0.25d → 1d | 0% → 100% |  | resources none → Разработчик Тимур [25%]; Компьютер; ChatGPT; baseline start none → 2026-01-15; baseline finish none → 2026-01-16 |
| 29 | Реализовать сценарий «получить дату изготовления»: выбор способа (скан/вручную), валидация формата (F3) | 2026-03-17 08:00 → 2026-01-16 (-60d) | 2026-03-17 10:40 → 2026-01-19 (-57d) | 0.33d → 1.33d | 0% → 100% |  | resources none → Разработчик Тимур [25%]; Компьютер; ChatGPT; baseline start none → 2026-01-16; baseline finish none → 2026-01-19 |
| 30 | Реализовать «положить продукт на хранение»: форма + сохранение (F4) | 2026-03-17 10:40 → 2026-01-20 (-56d) | 2026-03-17 15:00 → 2026-01-21 (-55d) | 0.42d → 1.67d | 0% → 100% |  | resources none → Разработчик Тимур [25%]; Компьютер; ChatGPT; baseline start none → 2026-01-20; baseline finish none → 2026-01-21 |
| 31 | Реализовать «просмотреть продукты на хранении»: список, сортировка/поиск (минимально) (F5) | 2026-03-17 15:00 → 2026-01-21 (-55d) | 2026-03-18 09:20 → 2026-01-23 (-54d) | 0.42d → 1.67d | 0% → 100% |  | resources none → Разработчик Тимур [25%]; Компьютер; ChatGPT; baseline start none → 2026-01-21; baseline finish none → 2026-01-23 |
| 32 | Реализовать «удалить продукт с хранения» + подтверждение (F6) | 2026-03-18 09:20 → 2026-01-23 (-54d) | 2026-03-18 10:40 → 2026-01-23 (-54d) | 0.17d → 0.67d | 0% → 100% |  | resources none → Разработчик Тимур [25%]; Компьютер; ChatGPT; baseline start none → 2026-01-23; baseline finish none → 2026-01-23 |
| 33 | Реализовать регистрацию пользователя (UI + обработка ошибок) (F7) | 2026-03-18 10:40 → 2026-01-26 (-51d) | 2026-03-18 14:20 → 2026-01-27 (-50d) | 0.33d → 1.33d | 0% → 100% |  | resources none → Разработчик Тимур [25%]; Компьютер; ChatGPT; baseline start none → 2026-01-26; baseline finish none → 2026-01-27 |
| 34 | Реализовать авторизацию пользователя и хранение токена/сессии (F8) | 2026-03-18 14:20 → 2026-01-27 (-50d) | 2026-03-18 17:00 → 2026-01-28 (-49d) | 0.33d → 1.33d | 0% → 100% |  | resources none → Разработчик Тимур [25%]; Компьютер; ChatGPT; baseline start none → 2026-01-27; baseline finish none → 2026-01-28 |
| 35 | Реализовать отправку сообщения об ошибке: выбор/загрузка видео + комментарий (F9) | 2026-03-19 08:00 → 2026-01-28 (-50d) | 2026-03-19 11:20 → 2026-01-30 (-48d) | 0.42d → 1.67d | 0% → 100% |  | resources none → Разработчик Тимур [25%]; Компьютер; ChatGPT; baseline start none → 2026-01-28; baseline finish none → 2026-01-30 |
| 36 | Встроенная разметка в рамках жалобы: инструмент выделения области и формирование YOLO-разметки (как часть F9/F15) | 2026-03-19 11:20 → 2026-01-30 (-48d) | 2026-03-20 08:40 → 2026-02-03 (-45d) | 0.67d → 2.67d | 0% → 100% |  | resources none → Разработчик Тимур [25%]; Компьютер; ChatGPT; baseline start none → 2026-01-30; baseline finish none → 2026-02-03 |
| 37 | **Офлайн ML** | 2026-03-24 11:20 → 2026-02-06 (-46d) | 2026-03-25 15:00 → 2026-02-19 (-34d) | 1.33d → 8.89d | 0% → 100% |  | baseline start none → 2026-02-06; baseline finish none → 2026-02-19 |
| 38 | Интеграция офлайн-модели на устройстве (TFLite/NCNN), вызов инференса (F1, «офлайн») | 2026-03-24 11:20 → 2026-02-06 (-46d) | 2026-03-25 10:00 → 2026-02-13 (-40d) | 0.83d → 5.56d | 0% → 100% |  | resources none → Разработчик Тимур [15%]; Компьютер; ChatGPT; baseline start none → 2026-02-06; baseline finish none → 2026-02-13 |
| 39 | Оптимизация скорости/памяти: пороги, уменьшение размера входа, замер FPS/latency (F1, требования по производительности) | 2026-03-25 10:00 → 2026-02-16 (-37d) | 2026-03-25 15:00 → 2026-02-19 (-34d) | 0.5d → 3.33d | 0% → 100% |  | resources none → Разработчик Тимур [15%]; Компьютер; ChatGPT; baseline start none → 2026-02-16; baseline finish none → 2026-02-19 |
| 40 | **Бэкенд** | 2026-03-16 16:20 → 2026-02-03 (-41d) | 2026-03-19 16:20 → 2026-02-19 (-28d) | 3d → 12d | 0% → 100% |  | baseline start none → 2026-02-03; baseline finish none → 2026-02-19 |
| 41 | Реализовать API авторизации/регистрации (эндпоинты + валидация) (F7, F8) | 2026-03-16 16:20 → 2026-02-03 (-41d) | 2026-03-17 12:00 → 2026-02-05 (-40d) | 0.58d → 2.33d | 0% → 100% |  | resources none → Разработчик Тимур [25%]; Компьютер; ChatGPT; baseline start none → 2026-02-03; baseline finish none → 2026-02-05 |
| 42 | Реализовать API «хранилище»: add/list/delete + права доступа (F4–F6) | 2026-03-17 12:00 → 2026-02-05 (-40d) | 2026-03-18 09:20 → 2026-02-10 (-36d) | 0.67d → 2.67d | 0% → 100% |  | resources none → Разработчик Тимур [25%]; Компьютер; ChatGPT; baseline start none → 2026-02-05; baseline finish none → 2026-02-10 |
| 43 | Реализовать API «детекция» (при необходимости серверного режима) (F1–F2) | 2026-03-18 09:20 → 2026-02-10 (-36d) | 2026-03-18 14:20 → 2026-02-12 (-34d) | 0.5d → 2d | 0% → 100% |  | resources none → Разработчик Тимур [25%]; Компьютер; ChatGPT; baseline start none → 2026-02-10; baseline finish none → 2026-02-12 |
| 44 | Реализовать API «сообщения об ошибке»: приём видео+разметки+комментария, сохранение (F9) | 2026-03-18 14:20 → 2026-02-12 (-34d) | 2026-03-19 10:40 → 2026-02-16 (-31d) | 0.67d → 2.67d | 0% → 100% |  | resources none → Разработчик Тимур [25%]; Компьютер; ChatGPT; baseline start none → 2026-02-12; baseline finish none → 2026-02-16 |
| 45 | Реализовать схему БД по ER: миграции, внешние ключи, индексы, ограничения (для F4–F14) | 2026-03-19 10:40 → 2026-02-17 (-30d) | 2026-03-19 16:20 → 2026-02-19 (-28d) | 0.58d → 2.33d | 0% → 100% |  | resources none → Разработчик Тимур [25%]; Компьютер; ChatGPT; baseline start none → 2026-02-17; baseline finish none → 2026-02-19 |
| 46 | **Админка** | 2026-03-17 10:00 → 2026-01-13 (-63d) | 2026-03-19 16:20 → 2026-02-19 (-28d) | 2.67d → 26.67d | 0% → 100% |  | baseline start none → 2026-01-13; baseline finish none → 2026-02-19 |
| 47 | Реализовать авторизацию администратора (F8 для админа) | 2026-03-17 10:00 → 2026-01-13 (-63d) | 2026-03-17 12:00 → 2026-01-16 (-60d) | 0.25d → 2.5d | 0% → 100% |  | resources none → Разработчик Тимур [10%]; Компьютер; ChatGPT; baseline start none → 2026-01-13; baseline finish none → 2026-01-16 |
| 48 | Реализовать «просмотреть сообщения об ошибках» (F10) | 2026-03-17 12:00 → 2026-01-16 (-60d) | 2026-03-17 15:40 → 2026-01-21 (-55d) | 0.33d → 3.33d | 0% → 100% |  | resources none → Разработчик Тимур [10%]; Компьютер; ChatGPT; baseline start none → 2026-01-16; baseline finish none → 2026-01-21 |
| 49 | Реализовать «удалить сообщения об ошибках» и отметку «обработано» (F11) | 2026-03-17 15:40 → 2026-01-21 (-55d) | 2026-03-18 08:40 → 2026-01-23 (-54d) | 0.25d → 2.5d | 0% → 100% |  | resources none → Разработчик Тимур [10%]; Компьютер; ChatGPT; baseline start none → 2026-01-21; baseline finish none → 2026-01-23 |
| 50 | Реализовать «список пользователей» и «блокировка пользователя» (F12–F13) | 2026-03-18 08:40 → 2026-01-26 (-51d) | 2026-03-18 12:00 → 2026-01-30 (-47d) | 0.42d → 4.17d | 0% → 100% |  | resources none → Разработчик Тимур [10%]; Компьютер; ChatGPT; baseline start none → 2026-01-26; baseline finish none → 2026-01-30 |
| 51 | Реализовать «статистика качества»: отчёты по версиям модели, динамика по времени (F14) | 2026-03-18 12:00 → 2026-01-30 (-47d) | 2026-03-19 09:20 → 2026-02-09 (-38d) | 0.67d → 6.67d | 0% → 100% |  | resources none → Разработчик Тимур [10%]; Компьютер; ChatGPT; baseline start none → 2026-01-30; baseline finish none → 2026-02-09 |
| 52 | Доработка разметки видео (AnnotationTool): экспорт YOLO, проверка целостности, пакетная разметка (F15) | 2026-03-19 09:20 → 2026-02-09 (-38d) | 2026-03-19 16:20 → 2026-02-19 (-28d) | 0.75d → 7.5d | 0% → 100% |  | resources none → Разработчик Тимур [10%]; Компьютер; ChatGPT; baseline start none → 2026-02-09; baseline finish none → 2026-02-19 |
| 53 | **ML** | 2026-03-19 16:20 → 2026-02-19 (-28d) | 2026-03-23 15:00 → 2026-02-24 (-27d) | 1.83d → 3.67d | 0% → 100% | 40, 46 → 37, 40, 46 | baseline start none → 2026-02-19; baseline finish none → 2026-02-24 |
| 54 | Подготовить конфиги обучения, пайплайн датасета, аугментации (F16) | 2026-03-19 16:20 → 2026-02-19 (-28d) | 2026-03-20 11:20 → 2026-02-20 (-28d) | 0.5d → 1d | 0% → 100% |  | resources none → Разработчик Тимур [50%]; Компьютер; ChatGPT; baseline start none → 2026-02-19; baseline finish none → 2026-02-20 |
| 55 | Обучение/дообучение модели на накопленных примерах + сохранение версии/метрик (F16) | 2026-03-20 11:20 → 2026-02-20 (-28d) | 2026-03-23 10:00 → 2026-02-23 (-28d) | 0.83d → 1.67d | 0% → 100% |  | resources none → Разработчик Тимур [50%]; Компьютер; ChatGPT; baseline start none → 2026-02-20; baseline finish none → 2026-02-23 |
| 56 | Оценка качества: тестовый прогон, расчёт метрик, сравнение версий (F14, F16) | 2026-03-23 10:00 → 2026-02-24 (-27d) | 2026-03-23 15:00 → 2026-02-24 (-27d) | 0.5d → 1d | 0% → 100% |  | resources none → Разработчик Тимур [50%]; Компьютер; ChatGPT; baseline start none → 2026-02-24; baseline finish none → 2026-02-24 |
| 57 | **Интеграция** | 2026-03-23 15:00 → 2026-02-25 (-26d) | 2026-03-24 14:20 → 2026-02-26 (-26d) | 0.92d → 1.83d | 0% → 100% |  | baseline start none → 2026-02-25; baseline finish none → 2026-02-26 |
| 58 | Процедура обновления модели: деплой весов на сервер и обновление мобильной модели (F16, эксплуатация) | 2026-03-23 15:00 → 2026-02-25 (-26d) | 2026-03-24 10:00 → 2026-02-25 (-27d) | 0.5d → 1d | 0% → 100% |  | resources none → Разработчик Тимур [50%]; Компьютер; ChatGPT; baseline start none → 2026-02-25; baseline finish none → 2026-02-25 |
| 59 | Тестирование отказов: нет сети, нет камеры, ошибки загрузки видео, лимиты размера (F1–F11) | 2026-03-24 10:00 → 2026-02-26 (-26d) | 2026-03-24 14:20 → 2026-02-26 (-26d) | 0.42d → 0.83d | 0% → 100% |  | resources none → Разработчик Тимур [50%]; Компьютер; ChatGPT; baseline start none → 2026-02-26; baseline finish none → 2026-02-26 |
| 60 | **Документация** | 2026-03-24 14:20 → 2026-02-26 (-26d) | 2026-03-25 15:00 → 2026-03-02 (-23d) | 1.08d → 2.17d | 0% → 100% |  | constraint as late as possible → finish no later than 2026-03-03; baseline start none → 2026-02-26; baseline finish none → 2026-03-02 |
| 61 | Подготовка раздела «эксперименты и результаты»: описание датасета, сравнение методов, выводы (F14–F16) | 2026-03-24 14:20 → 2026-02-26 (-26d) | 2026-03-25 10:00 → 2026-02-27 (-26d) | 0.58d → 1.17d | 0% → 100% |  | resources none → Разработчик Тимур [50%]; Компьютер; ChatGPT; baseline start none → 2026-02-26; baseline finish none → 2026-02-27 |
| 62 | Обновление диаграмм/описаний под финальную реализацию и подготовка презентации/демо (все ФТ) | 2026-03-25 10:00 → 2026-03-02 (-23d) | 2026-03-25 15:00 → 2026-03-02 (-23d) | 0.5d → 1d | 0% → 100% |  | resources none → Разработчик Тимур [50%]; Компьютер; ChatGPT; baseline start none → 2026-03-02; baseline finish none → 2026-03-02 |
